# Разработка АИС Турфирма

Schedule from MS Project, 2020-10-28 to 2020-12-20, 6 hours a day, costs in р., A marks actual dates.
Microsoft

## Calendars

- Стандартный: Mon-Sat 09:00-13:00, 14:00-16:00; Sun off.

## Resources

| Resource | Unit | Rate |
| --- | --- | --- |
| Соколов С.А. |  | 100 |
| ПО и ПК |  | 60000 |
| Расходные ресурсы |  | 1500 |
| Электроэнергия | КВт*ч | 3.62 |
| Интернет | День | 17 |

## Schedule

| ID | WBS | Task | Type | Duration | Start | Finish | Predecessors | Complete | Actual finish | Baseline start | Baseline finish | Baseline duration | Constraint | Resources | Work | Actual work | Cost | Baseline cost | Actual cost | Выполнено |
| --- | --- | --- | --- | --- | --- | --- | --- | --- | --- | --- | --- | --- | --- | --- | --- | --- | --- | --- | --- | --- |
| 1 | 1 | **1. Планирование проекта** |  | 9d | 2020-10-28 A | 2020-11-06 |  | 100% | 2020-11-07 | 2020-10-28 | 2020-11-12 | 14d |  | ПО и ПК; Расходные ресурсы [200%] | 54h | 54h | 68,845.44 | 69,445.44 | 68,845.44 | 100 |
| 2 | 1.1 | 1.1. Изучение предметной области и поиск аналогичных проектов |  | 3d | 2020-10-28 A | 2020-10-30 A |  | 100% |  | 2020-10-28 | 2020-12-10 | 4d | start no earlier than 2020-01-14 | Соколов С.А.; Электроэнергия [24 КВт*ч]; Интернет [4 День] | 18h | 18h | 1,954.88 | 2,554.88 | 1,954.88 | 100 |
| 3 | 1.2 | 1.2. Проведение брифинга с заказчиком и составление брифа |  | 2d | 2020-10-31 A | 2020-11-02 A | 2 | 100% |  | 2020-10-31 | 2020-11-02 | 2d | finish no earlier than 2020-01-21 | Соколов С.А.; Интернет [3 День]; Электроэнергия [18 КВт*ч] | 12h | 12h | 1,316.16 | 1,316.16 | 1,316.16 | 100 |
| 4 | 1.3 | 1.3. Разработка технического задания |  | 2d | 2020-11-03 A | 2020-11-05 A | 3 | 100% |  | 2020-11-03 | 2020-11-05 | 2d | finish no earlier than 2020-01-24 | Соколов С.А.; Интернет [4 День]; Электроэнергия [18 КВт*ч] | 12h | 12h | 1,333.16 | 1,333.16 | 1,333.16 | 100 |
| 5 | 1.4 | 1.4. Планирование задач проекта |  | 1d | 2020-11-05 A | 2020-11-05 A | 4 | 100% |  | 2020-11-05 | 2020-11-05 | 1d |  | Соколов С.А.; Интернет [1 День]; Электроэнергия [1 КВт*ч] | 6h | 6h | 620.62 | 620.62 | 620.62 | 100 |
| 6 | 1.5 | 1.5. Согласование с заказчиком ТЗ, подпись договора |  | 1d | 2020-11-06 A | 2020-11-06 A | 5 | 100% |  | 2020-11-06 | 2020-11-06 | 1d |  | Соколов С.А.; Интернет [1 День]; Электроэнергия [1 КВт*ч] | 6h | 6h | 620.62 | 620.62 | 620.62 | 100 |
| 7 | 1.6 | 1.6. | milestone | 0d | 2020-11-07 A | 2020-11-07 A |  | 100% |  | 2020-11-07 | 2020-11-07 |  | finish no earlier than 2020-11-07 |  |  |  |  |  |  | 100 |
| 8 | 2 | **2. Разработка сайта** |  | 8d | 2020-11-07 A | 2020-11-16 A | 1 | 100% |  | 2020-11-07 | 2020-11-16 | 8d |  |  | 48h | 48h | 5,225.92 | 5,225.92 | 5,225.92 | 100 |
| 9 | 2.1 | 2.1. Создание логической структуры и навигации приложения |  | 2d | 2020-11-07 A | 2020-11-09 A |  | 100% |  | 2020-11-07 | 2020-11-09 | 2d | start no earlier than 2020-01-25 | Соколов С.А.; Электроэнергия [18 КВт*ч]; Интернет [3 День] | 12h | 12h | 1,316.16 | 1,316.16 | 1,316.16 | 100 |
| 10 | 2.2 | 2.2. Создание дизайна приложения |  | 4d | 2020-11-10 A | 2020-11-13 A | 9 | 100% |  | 2020-11-10 | 2020-11-13 | 4d |  | Соколов С.А.; Интернет [5 День]; Электроэнергия [30 КВт*ч] | 24h | 24h | 2,593.6 | 2,593.6 | 2,593.6 | 100 |
| 11 | 2.3 | 2.3. Оптимизация приложения |  | 1d | 2020-11-14 A | 2020-11-14 A | 10 | 100% |  | 2020-11-14 | 2020-11-14 | 1d | finish no earlier than 2020-03-26 | Соколов С.А.; Интернет [2 День]; Электроэнергия [12 КВт*ч] | 6h | 6h | 677.44 | 677.44 | 677.44 | 100 |
| 12 | 2.4 | 2.4. Утверждение дизайна приложения |  | 1d | 2020-11-16 A | 2020-11-16 A | 11 | 100% |  | 2020-11-16 | 2020-11-16 | 1d |  | Соколов С.А.; Интернет [1 День]; Электроэнергия [6 КВт*ч] | 6h | 6h | 638.72 | 638.72 | 638.72 | 100 |
| 13 | 3 | **3. Реализация** |  | 18d | 2020-11-16 A | 2020-12-05 A | 8 | 100% |  | 2020-11-16 | 2020-12-05 | 18d |  |  | 96h | 96h | 10,142.08 | 10,142.08 | 10,142.08 | 100 |
| 14 | 3.1 | 3.1. Создание функциональной части приложения |  | 11d | 2020-11-16 A | 2020-11-27 A |  | 100% |  | 2020-11-16 | 2020-11-27 | 11d | start no earlier than 2020-04-17 | Соколов С.А.; Интернет [9 День]; Электроэнергия [54 КВт*ч] | 66h | 66h | 6,948.48 | 6,948.48 | 6,948.48 | 100 |
| 15 | 3.2 | 3.2. Подключение приложения к БД |  | 3d | 2020-11-28 A | 2020-12-01 A | 14 | 100% |  | 2020-11-28 | 2020-12-01 | 3d |  | Соколов С.А.; Интернет [5 День]; Электроэнергия [30 КВт*ч] | 18h | 18h | 1,993.6 | 1,993.6 | 1,993.6 | 100 |
| 16 | 3.3 | 3.3. Завершение создание основной функциональности |  | 2d | 2020-12-03 A | 2020-12-05 A | 15 | 100% |  | 2020-12-03 | 2020-12-05 | 2d | finish no earlier than 2020-12-05 | Соколов С.А. | 12h | 12h | 1,200 | 1,200 | 1,200 | 100 |
| 17 | 4 | **4. Тестирование** |  | 3d | 2020-12-05 A | 2020-12-08 A | 13 | 100% |  | 2020-12-05 | 2020-12-08 | 3d |  |  | 24h | 24h | 2,477.44 | 2,477.44 | 2,477.44 | 100 |
| 18 | 4.1 | 4.1. Тестирование нагрузки |  | 1d | 2020-12-05 A | 2020-12-05 A |  | 100% |  | 2020-12-05 | 2020-12-05 | 1d | start no earlier than 2020-05-27 | Соколов С.А.; Интернет [1 День]; Электроэнергия [6 КВт*ч] | 6h | 6h | 638.72 | 638.72 | 638.72 | 100 |
| 19 | 4.2 | 4.2. Проверка оптимизации |  | 1d | 2020-12-06 A | 2020-12-07 A | 18 | 100% |  | 2020-12-06 | 2020-12-07 | 1d |  | Соколов С.А.; Интернет [1 День]; Электроэнергия [6 КВт*ч] | 6h | 6h | 638.72 | 638.72 | 638.72 | 100 |
| 20 | 4.3 | 4.3. Исправление багов |  | 2d | 2020-12-07 A | 2020-12-08 A | 19 | 100% |  | 2020-12-07 | 2020-12-08 | 2d |  | Соколов С.А. | 12h | 12h | 1,200 | 1,200 | 1,200 | 100 |
| 21 | 5 | **5. Ввод в эксплуатацию** |  | 10d | 2020-12-09 A | 2020-12-20 A | 17 | 100% |  | 2020-12-09 | 2020-12-20 | 10d |  |  | 6h | 6h | 620.62 | 620.62 | 620.62 | 100 |
| 22 | 5.1 | 5.1. Проведение инструктажа по использованию функционала приложения |  | 1d | 2020-12-09 A | 2020-12-09 A |  | 100% |  | 2020-12-09 | 2020-12-09 | 1d |  | Соколов С.А.; Интернет [1 День]; Электроэнергия [1 КВт*ч] | 6h | 6h | 620.62 | 620.62 | 620.62 | 100 |
| 23 | 5.2 | 5.2. Передача проекта | milestone | 0d | 2020-12-20 A | 2020-12-20 A | 22 | 100% |  | 2020-12-20 | 2020-12-20 |  | finish no earlier than 2020-12-20 |  |  |  |  |  |  | 100 |
